Schedule from GanttProject, 2025-09-15 to 2026-02-06.

## Calendars

- Project calendar: Mon-Fri working; Sat-Sun off.

## Resources

| Resource | Group |
| --- | --- |
| Víctor Sánchez Valencia | Desarrollador |
| Clara Ruiz de las Heras | Desarrollador |
| Miguel Barrigón Gómez | Desarrollador |
| Mario Medrano Paredes | Desarrollador |

## Schedule

| ID | WBS | Task | Type | Duration | Start | Finish | Predecessors | Complete | Resources |
| --- | --- | --- | --- | --- | --- | --- | --- | --- | --- |
| 1 | 1 | **TP1:SE** |  | 104d | 2025-09-15 | 2026-02-05 |  |  |  |
| 2 | 1.1 | **Especificación del proyecto** |  | 9d | 2025-09-15 | 2025-09-25 |  | 75% |  |
| 3 | 1.1.1 | Definción de objetivos |  | 4d | 2025-09-15 | 2025-09-18 |  | 100% |  |
| 4 | 1.1.2 | Estudio del sistema |  | 4d | 2025-09-22 | 2025-09-25 |  | 50% |  |
| 5 | 1.2 | ENTREGA 1 SEMANA | milestone | 0d | 2025-09-19 | 2025-09-19 |  |  | Víctor Sánchez Valencia |
| 6 | 1.3 | ENTREGA 2 SEMANA | milestone | 0d | 2025-09-26 | 2025-09-26 |  |  | Clara Ruiz de las Heras |
| 7 | 1.4 | **PCB0: Diseño electronico y captura esquematica PCB0** |  | 14d | 2025-09-29 | 2025-10-16 |  |  |  |
| 8 | 1.4.1 | Busqueda de componentes |  | 1d | 2025-09-29 | 2025-09-29 |  |  |  |
| 9 | 1.4.2 | Creación de nuevos componentes |  | 2d | 2025-09-30 | 2025-10-01 | 8 |  |  |
| 10 | 1.4.3 | Posicionamiento componentes |  | 3d | 2025-09-30 | 2025-10-02 |  |  |  |
| 11 | 1.4.4 | Análisis consumo eléctrico |  | 4d | 2025-10-03 | 2025-10-08 |  |  |  |
| 12 | 1.4.5 | Análisis disipación de potencia |  | 4d | 2025-10-08 | 2025-10-13 |  |  |  |
| 13 | 1.4.6 | Rutado de conexiones |  | 4d | 2025-10-13 | 2025-10-16 |  |  |  |
| 14 | 1.4.7 | Generación de listado de materiales (BOM) |  | 14d | 2025-09-29 | 2025-10-16 |  |  |  |
| 15 | 1.4.8 | Documentación esquemático. Control de cambios |  | 14d | 2025-09-29 | 2025-10-16 |  |  |  |
| 16 | 1.5 | **PCB1:Diseño electrónico y captura esquemática** |  | 14d | 2025-09-29 | 2025-10-16 |  |  |  |
| 17 | 1.5.1 | Busqueda de componentes |  | 1d | 2025-09-29 | 2025-09-29 |  |  |  |
| 18 | 1.5.2 | Creación de nuevos componentes |  | 2d | 2025-09-30 | 2025-10-01 |  |  |  |
| 19 | 1.5.3 | Posicionamiento componentes |  | 3d | 2025-09-30 | 2025-10-02 |  |  |  |
| 20 | 1.5.4 | Análisis consumo eléctrico |  | 4d | 2025-10-03 | 2025-10-08 |  |  |  |
| 21 | 1.5.5 | Análisis disipación de potencia |  | 4d | 2025-10-08 | 2025-10-13 |  |  |  |
| 22 | 1.5.6 | Rutado de conexiones |  | 4d | 2025-10-13 | 2025-10-16 |  |  |  |
| 23 | 1.5.7 | Generación de listado de materiales (BOM) |  | 14d | 2025-09-29 | 2025-10-16 |  |  |  |
| 24 | 1.5.8 | Documentación esquemático. Control de cambios |  | 14d | 2025-09-29 | 2025-10-16 |  |  |  |

Notes:
- 4: hoja de especificaciones
- 8: listado de los componentes
- 9: de aquellos que no aparezcan en proteus o busqueda en otras librerias
- 10: colocación en proteus
- 14: con su presupuesto, por su unidad y el coste de diseño (horas dedicadas)
- 15: autoexplicativo, debemos poner algo de texto para describir que hacen. / Control de cambios, indicar semana a semana lo que se va haciendo
- 17: listado de los componentes
- 18: de aquellos que no aparezcan en proteus o busqueda en otras librerias
- 19: colocación en proteus
- 23: con su presupuesto, por su unidad y el coste de diseño (horas dedicadas)
- 24: autoexplicativo, debemos poner algo de texto para describir que hacen. / Control de cambios, indicar semana a semana lo que se va haciendo

| ID | WBS | Task | Type | Duration | Start | Finish | Resources |
| --- | --- | --- | --- | --- | --- | --- | --- |
| 25 | 1.6 | **PCB2 :Diseño electrónico y captura esquemática** |  | 14d | 2025-09-29 | 2025-10-16 |  |
| 26 | 1.6.1 | Busqueda de componentes |  | 1d | 2025-09-29 | 2025-09-29 |  |
| 27 | 1.6.2 | Creación de nuevos componentes |  | 2d | 2025-09-30 | 2025-10-01 |  |
| 28 | 1.6.3 | Posicionamiento componentes |  | 3d | 2025-09-30 | 2025-10-02 |  |
| 29 | 1.6.4 | Análisis consumo eléctrico |  | 4d | 2025-10-03 | 2025-10-08 |  |
| 30 | 1.6.5 | Análisis disipación de potencia |  | 4d | 2025-10-08 | 2025-10-13 |  |
| 31 | 1.6.6 | Rutado de conexiones |  | 4d | 2025-10-13 | 2025-10-16 |  |
| 32 | 1.6.7 | Generación de listado de materiales (BOM) |  | 14d | 2025-09-29 | 2025-10-16 |  |
| 33 | 1.6.8 | Documentación esquemático. Control de cambios |  | 14d | 2025-09-29 | 2025-10-16 |  |
| 34 | 1.7 | **PCB3:Diseño electrónico y captura esquemática** |  | 14d | 2025-09-29 | 2025-10-16 |  |
| 35 | 1.7.1 | Busqueda de componentes |  | 1d | 2025-09-29 | 2025-09-29 |  |
| 36 | 1.7.2 | Creación de nuevos componentes |  | 2d | 2025-09-30 | 2025-10-01 |  |
| 37 | 1.7.3 | Posicionamiento componentes |  | 3d | 2025-09-30 | 2025-10-02 |  |
| 38 | 1.7.4 | Análisis consumo eléctrico |  | 4d | 2025-10-03 | 2025-10-08 |  |
| 39 | 1.7.5 | Análisis disipación de potencia |  | 4d | 2025-10-08 | 2025-10-13 |  |
| 40 | 1.7.6 | Rutado de conexiones |  | 4d | 2025-10-13 | 2025-10-16 |  |
| 41 | 1.7.7 | Generación de listado de materiales (BOM) |  | 14d | 2025-09-29 | 2025-10-16 |  |
| 42 | 1.7.8 | Documentación esquemático. Control de cambios |  | 14d | 2025-09-29 | 2025-10-16 |  |
| 43 | 1.8 | ENTREGA 3 SEMANA | milestone | 0d | 2025-10-03 | 2025-10-03 | Miguel Barrigón Gómez |
| 44 | 1.9 | ENTREGA 4 SEMANA | milestone | 0d | 2025-10-10 | 2025-10-10 | Mario Medrano Paredes |
| 45 | 1.10 | ENTREGA 5 SEMANA | milestone | 0d | 2025-10-17 | 2025-10-17 | Víctor Sánchez Valencia |
| 46 | 1.11 | **PCB0: Diseño de la placa de circuito impreso** |  | 16d | 2025-10-17 | 2025-11-07 |  |
| 47 | 1.11.1 | Creación de huellas de nuevos componentes |  | 5d | 2025-10-17 | 2025-10-23 |  |
| 48 | 1.11.2 | Posicionado de componentes |  | 5d | 2025-10-17 | 2025-10-23 |  |
| 49 | 1.11.3 | Definición de borde y zonas de conectores |  | 5d | 2025-10-17 | 2025-10-23 |  |
| 50 | 1.11.4 | Documentación: acotaciones geométricas |  | 11d | 2025-10-23 | 2025-11-06 |  |
| 51 | 1.11.5 | Planos de masa y otros |  | 3d | 2025-10-23 | 2025-10-27 |  |
| 52 | 1.11.6 | Rutado de conexiones |  | 5d | 2025-10-23 | 2025-10-29 |  |
| 53 | 1.11.7 | Planos de disipación térmica |  | 2d | 2025-10-23 | 2025-10-24 |  |
| 54 | 1.11.8 | Generación de ficheros para el fabricante (gerber) |  | 7d | 2025-10-30 | 2025-11-07 |  |
| 55 | 1.11.9 | Documentación: serigrafía. Control de cambios |  | 15d | 2025-10-17 | 2025-11-06 |  |

Notes:
- 26: listado de los componentes
- 27: de aquellos que no aparezcan en proteus o busqueda en otras librerias
- 28: colocación en proteus
- 32: con su presupuesto, por su unidad y el coste de diseño (horas dedicadas)
- 33: autoexplicativo, debemos poner algo de texto para describir que hacen. / Control de cambios, indicar semana a semana lo que se va haciendo
- 35: listado de los componentes
- 36: de aquellos que no aparezcan en proteus o busqueda en otras librerias
- 37: colocación en proteus
- 41: con su presupuesto, por su unidad y el coste de diseño (horas dedicadas)
- 42: autoexplicativo, debemos poner algo de texto para describir que hacen. / Control de cambios, indicar semana a semana lo que se va haciendo

| ID | WBS | Task | Type | Duration | Start | Finish | Resources |
| --- | --- | --- | --- | --- | --- | --- | --- |
| 56 | 1.12 | **PCB1:Diseño de la placa de circuito impreso** |  | 16d | 2025-10-17 | 2025-11-07 |  |
| 57 | 1.12.1 | Creación de huellas de nuevos componentes |  | 5d | 2025-10-17 | 2025-10-23 |  |
| 58 | 1.12.2 | Posicionado de componentes |  | 5d | 2025-10-17 | 2025-10-23 |  |
| 59 | 1.12.3 | Definición de borde y zonas de conectores |  | 5d | 2025-10-17 | 2025-10-23 |  |
| 60 | 1.12.4 | Documentación: acotaciones geométricas |  | 11d | 2025-10-23 | 2025-11-06 |  |
| 61 | 1.12.5 | Planos de masa y otros |  | 3d | 2025-10-23 | 2025-10-27 |  |
| 62 | 1.12.6 | Rutado de conexiones |  | 5d | 2025-10-23 | 2025-10-29 |  |
| 63 | 1.12.7 | Planos de disipación térmica |  | 2d | 2025-10-23 | 2025-10-24 |  |
| 64 | 1.12.8 | Generación de ficheros para el fabricante (gerber) |  | 7d | 2025-10-30 | 2025-11-07 |  |
| 65 | 1.12.9 | Documentación: serigrafía. Control de cambios |  | 15d | 2025-10-17 | 2025-11-06 |  |
| 66 | 1.13 | **PCB2: Diseño de la placa de circuito impreso** |  | 16d | 2025-10-17 | 2025-11-07 |  |
| 67 | 1.13.1 | Creación de huellas de nuevos componentes |  | 5d | 2025-10-17 | 2025-10-23 |  |
| 68 | 1.13.2 | Posicionado de componentes |  | 5d | 2025-10-17 | 2025-10-23 |  |
| 69 | 1.13.3 | Definición de borde y zonas de conectores |  | 5d | 2025-10-17 | 2025-10-23 |  |
| 70 | 1.13.4 | Documentación: acotaciones geométricas |  | 11d | 2025-10-23 | 2025-11-06 |  |
| 71 | 1.13.5 | Planos de masa y otros |  | 3d | 2025-10-23 | 2025-10-27 |  |
| 72 | 1.13.6 | Rutado de conexiones |  | 5d | 2025-10-23 | 2025-10-29 |  |
| 73 | 1.13.7 | Planos de disipación térmica |  | 2d | 2025-10-23 | 2025-10-24 |  |
| 74 | 1.13.8 | Generación de ficheros para el fabricante (gerber) |  | 7d | 2025-10-30 | 2025-11-07 |  |
| 75 | 1.13.9 | Documentación: serigrafía. Control de cambios |  | 15d | 2025-10-17 | 2025-11-06 |  |
| 76 | 1.14 | **PCB3: Diseño de la placa de circuito impreso** |  | 16d | 2025-10-17 | 2025-11-07 |  |
| 77 | 1.14.1 | Creación de huellas de nuevos componentes |  | 5d | 2025-10-17 | 2025-10-23 |  |
| 78 | 1.14.2 | Posicionado de componentes |  | 5d | 2025-10-17 | 2025-10-23 |  |
| 79 | 1.14.3 | Definición de borde y zonas de conectores |  | 5d | 2025-10-17 | 2025-10-23 |  |
| 80 | 1.14.4 | Documentación: acotaciones geométricas |  | 11d | 2025-10-23 | 2025-11-06 |  |
| 81 | 1.14.5 | Planos de masa y otros |  | 3d | 2025-10-23 | 2025-10-27 |  |
| 82 | 1.14.6 | Rutado de conexiones |  | 5d | 2025-10-23 | 2025-10-29 |  |
| 83 | 1.14.7 | Planos de disipación térmica |  | 2d | 2025-10-23 | 2025-10-24 |  |
| 84 | 1.14.8 | Generación de ficheros para el fabricante (gerber) |  | 7d | 2025-10-30 | 2025-11-07 |  |
| 85 | 1.14.9 | Documentación: serigrafía. Control de cambios |  | 10d | 2025-10-24 | 2025-11-06 |  |
| 86 | 1.15 | ENTREGA 6 SEMANA | milestone | 0d | 2025-10-24 | 2025-10-24 | Clara Ruiz de las Heras |
| 87 | 1.16 | ENTREGA 7 SEMANA | milestone | 0d | 2025-10-31 | 2025-10-31 | Miguel Barrigón Gómez |
| 88 | 1.17 | ENTREGA 8 SEMANA | milestone | 0d | 2025-11-07 | 2025-11-07 | Mario Medrano Paredes |

| ID | WBS | Task | Type | Duration | Start | Finish | Resources |
| --- | --- | --- | --- | --- | --- | --- | --- |
| 89 | 1.18 | **Fabricación de la placa de circuito impreso** |  | 11d | 2025-11-07 | 2025-11-21 |  |
| 90 | 1.18.1 | Envío al fabricante |  | 5d | 2025-11-07 | 2025-11-13 |  |
| 91 | 1.18.2 | Recepción y revisión |  | 2d | 2025-11-13 | 2025-11-14 |  |
| 92 | 1.18.3 | Montaje de componentes |  | 6d | 2025-11-14 | 2025-11-21 |  |
| 93 | 1.19 | ENTREGA 9 SEMANA | milestone | 0d | 2025-11-21 | 2025-11-21 | Víctor Sánchez Valencia |
| 94 | 1.20 | **Realización Hardware FPGA.** |  | 15d | 2025-11-21 | 2025-12-11 |  |
| 95 | 1.20.1 | Core: LarVA. |  | 15d | 2025-11-21 | 2025-12-11 |  |
| 96 | 1.20.2 | Periféricos: UART0/1/2, SPI0/1, Temporizador, GPOut, GPIn,.. |  | 15d | 2025-11-21 | 2025-12-11 |  |
| 97 | 1.20.3 | Simulación |  | 15d | 2025-11-21 | 2025-12-11 |  |
| 98 | 1.21 | ENTREGA 10 SEMANA | milestone | 0d | 2025-11-28 | 2025-11-28 | Clara Ruiz de las Heras |
| 99 | 1.22 | ENTREGA 11 SEMANA | milestone | 0d | 2025-12-05 | 2025-12-05 | Miguel Barrigón Gómez |
| 100 | 1.23 | **Realización Firmware. Simulación y depuración** |  | 14d | 2025-12-11 | 2025-12-30 |  |
| 101 | 1.23.1 | Control de elementos hardware: drivers |  | 14d | 2025-12-11 | 2025-12-30 |  |
| 102 | 1.23.2 | Verificación |  | 14d | 2025-12-11 | 2025-12-30 |  |
| 103 | 1.23.3 | Programa principal. Especificaciones |  | 14d | 2025-12-11 | 2025-12-30 |  |
| 104 | 1.23.4 | Documentación firmware. Control de cambios |  | 14d | 2025-12-11 | 2025-12-30 |  |
| 105 | 1.24 | **Verificación hardware** |  | 41d | 2025-12-11 | 2026-02-05 |  |
| 106 | 1.24.1 | Verificación inicial |  | 20d | 2025-12-11 | 2026-01-07 |  |
| 107 | 1.24.2 | Verificación firmware |  | 20d | 2025-12-11 | 2026-01-07 |  |
| 108 | 1.24.3 | Resolución de problemas |  | 20d | 2025-12-11 | 2026-01-07 |  |
| 109 | 1.24.4 | Análisis de prestaciones |  | 20d | 2025-12-11 | 2026-01-07 |  |
| 110 | 1.24.5 | Montaje final. Piezas mecánicas |  | 10d | 2026-01-07 | 2026-01-20 |  |
| 111 | 1.24.6 | Pruebas de campo |  | 13d | 2026-01-20 | 2026-02-05 |  |
| 112 | 1.25 | ENTREGA 12 SEMANA | milestone | 0d | 2025-12-12 | 2025-12-12 | Mario Medrano Paredes |
| 113 | 1.26 | ENTREGA 13 SEMANA | milestone | 0d | 2025-12-19 | 2025-12-19 | Víctor Sánchez Valencia |
| 114 | 1.27 | ENTREGA 14 SEMANA | milestone | 0d | 2026-01-09 | 2026-01-09 | Clara Ruiz de las Heras |
| 115 | 1.28 | ENTREGA 15 SEMANA | milestone | 0d | 2026-01-16 | 2026-01-16 | Miguel Barrigón Gómez |
| 116 | 1.29 | ENTREGA 16 SEMANA | milestone | 0d | 2026-01-21 | 2026-01-21 | Mario Medrano Paredes |

| ID | WBS | Task | Type | Duration | Start | Finish | Resources |
| --- | --- | --- | --- | --- | --- | --- | --- |
| 117 | 1.30 | **Documentación** |  | 100d | 2025-09-19 | 2026-02-05 |  |
| 118 | 1.30.1 | Realización informe |  | 100d | 2025-09-19 | 2026-02-05 |  |
| 119 | 1.31 | ENTREGA FINAL | milestone | 0d | 2026-02-06 | 2026-02-06 | Víctor Sánchez Valencia; Clara Ruiz de las Heras; Miguel Barrigón Gómez; Mario Medrano Paredes |
